# ESD 改版

Schedule from a web Gantt chart, 2025-10-28 to 2026-01-30.
Every day is a working day

## Schedule

| ID | WBS | Task | Duration | Start | Finish | Predecessors | Complete | Status |
| --- | --- | --- | --- | --- | --- | --- | --- | --- |
| 2 | 1 | Kickoff | 1d | 2025-10-28 | 2025-10-28 |  | 100% | done |
| 3 | 2 | Mask in | 12d | 2025-10-30 | 2025-11-10 |  |  |  |
| 4 | 3 | **Qual. lot** | 73d | 2025-11-11 | 2026-01-22 |  |  | waiting |
| 5 | 3.1 | WAFER PROCESS | 28d | 2025-11-11 | 2025-12-08 |  |  | waiting |
| 6 | 3.2 | PKG+FT | 31d | 2025-12-09 | 2026-01-08 | 5 |  | waiting |
| 7 | 3.3 | Bench test | 14d | 2026-01-09 | 2026-01-22 | 6 |  | waiting |
| 8 | 3.4 | RE168 | 14d | 2026-01-09 | 2026-01-22 | 6 |  | waiting |
| 9 | 3.5 | AE 验证 | 14d | 2026-01-09 | 2026-01-22 | 6 |  | waiting |
| 10 | 4 | RFS meeting | 9d | 2026-01-22 | 2026-01-30 |  | 100% | waiting |
